# Proyecto Metodos

Schedule from MS Project, 2022-09-12 to 2022-10-19, costs in S.

## Calendars

- Calendario_22: Mon 09:00-13:00, 15:00-19:00; Tue off; Wed 09:00-13:00, 15:00-19:00; Thu off; Fri 09:00-13:00, 15:00-19:00; Sat-Sun off. Exceptions (off unless hours are given): 2022-09-23 (Aniversario INRO), 2022-10-08 (Combate de Angamos).

## Resources

| Resource | Group | Unit | Rate | Cost per use |
| --- | --- | --- | --- | --- |
| Sebastián Pérez | Arquitecto Empresarial | Bultos | 30 |  |
| Miguel Fernández | Arquitecto Empresarial |  | 35 |  |
| Valeria Melly | Arquitecto Empresarial |  | 40 |  |
| Fátima Oliden | Arquitecto Empresarial |  | 30 |  |
| Papel A4 |  | millar | 10 |  |
| PC |  | unid | 2.5 |  |
| Lapiceros |  | docena | 4 |  |
| Almuerzo |  |  |  |  |
| Transporte |  |  |  |  |
| Reglas |  | docena | 1 |  |
| Cartuchos |  | kit | 77 |  |
| Impresora |  |  | 1.5 |  |
| Correctores |  | docena | 2 | 60 |
| Agua |  | sixpack | 6 |  |
| USB |  | unid | 10 |  |
| Licencias |  | unid | 50 |  |
| Lapiz |  | caja | 6 |  |
| Perforador |  | unid | 4 |  |
| Engrapador |  | unid | 3 |  |
| Folder |  | docena | 5 |  |
| Borrador |  | docena | 1 |  |
| Grapas |  | caja | 4 |  |
| Resaltador |  | docena | 2 |  |
| Plumón |  | unid | 1 |  |
| colores |  | caja | 3 |  |
| Cuaderno |  | docena | 12 |  |
| Mascarilla KN-95 |  | caja | 10 |  |
| Laptop-1 |  |  | 1.5 |  |
| Laptop-2 |  |  | 1.5 |  |
| Laptop-3 |  |  | 1.5 |  |

## Schedule

| ID | WBS | Task | Type | Duration | Start | Finish | Predecessors | Baseline start | Baseline finish | Baseline duration | Total slack | Resources | Work | Cost | Baseline cost | Costo_Dólares | Costo_Euros |
| --- | --- | --- | --- | --- | --- | --- | --- | --- | --- | --- | --- | --- | --- | --- | --- | --- | --- |
| 1 | 1 | **ARQUITECTURA EMPRESARIAL DEL PROCESO DE PROSPECCIÓN DE CLIENTES DE LA EMPRESA INRO S.A.C.** |  | 15.31d | 2022-09-12 09:00 | 2022-10-19 11:30 |  | 2022-09-12 09:00 | 2022-10-12 11:00 | 13.25d | 0d |  | 199.5h | 5,094.43 | 4,859.93 | $ 1341 | € 1264 |
| 3 | 1.1 | **Fase Preliminar** |  | 3.25d | 2022-09-12 09:00 | 2022-09-19 11:00 |  | 2022-09-12 09:00 | 2022-09-16 11:00 | 2.25d | 0d |  | 36h | 1,097.91 | 1,097.91 | $ 289 | € 272 |
| 4 | 1.1.1 | **Descripción del proyecto** |  | 0.56d | 2022-09-12 09:00 | 2022-09-12 15:30 |  | 2022-09-12 09:00 | 2022-09-12 15:30 | 0.56d | 0d |  | 8.5h | 214.9 | 214.9 | $ 57 | € 53 |
| 5 | 1.1.1.1 | Descripción de la empresa |  | 2h | 2022-09-12 09:00 | 2022-09-12 11:00 |  | 2022-09-12 09:00 | 2022-09-12 11:00 | 2h | 0d | Sebastián Pérez [1 Bultos]; Transporte [0.1%]; PC [1 unid]; Mascarilla KN-95 [0.05 caja]; Almuerzo [0.1%] | 4h | 76.5 | 76.5 | $ 20 | € 19 |
| 6 | 1.1.1.2 | Alcance |  | 3h | 2022-09-12 09:00 | 2022-09-12 12:00 | 5SS | 2022-09-12 09:00 | 2022-09-12 12:00 | 3h | 0d | Lapiz [0.05 caja]; Borrador [0.1 docena]; Sebastián Pérez [1 Bultos]; Cuaderno [0.1 docena]; Agua [0.2 sixpack] | 3h | 92.8 | 92.8 | $ 24 | € 23 |
| 7 | 1.1.1.3 | Definición de objetivos |  | 1.5h | 2022-09-12 12:00 | 2022-09-12 15:30 | 6 | 2022-09-12 12:00 | 2022-09-12 15:30 | 1.5h | 0d | Lapiceros [0.1 docena]; Sebastián Pérez [1 Bultos]; Resaltador [0.1 docena] | 1.5h | 45.6 | 45.6 | $ 12 | € 11 |
| 8 | 1.1.1.4 | Fin de fase 1.1.1 | milestone | 0d | 2022-09-12 15:30 | 2022-09-12 15:30 | 7 | 2022-09-12 15:30 | 2022-09-12 15:30 | 0d | 0d |  |  |  |  | $ 0 | € 0 |
| 9 | 1.1.2 | **Imperativos empresariales** |  | 1.19d | 2022-09-12 15:30 | 2022-09-14 17:00 | 4 | 2022-09-12 15:30 | 2022-09-13 17:00 | 0.44d | 0d |  | 9.5h | 381.01 | 381.01 | $ 100 | € 95 |
| 10 | 1.1.2.1 | Declaración de la Misión de la Organización |  | 1.5h | 2022-09-12 15:30 | 2022-09-12 17:00 |  | 2022-09-12 15:30 | 2022-09-12 17:00 | 1.5h | 0d | Miguel Fernández; Lapiz [0.05 caja]; Agua [0.2 sixpack]; Cuaderno [0.13 docena] | 1.5h | 55.56 | 55.56 | $ 15 | € 14 |
| 11 | 1.1.2.2 | Metas Empresariales |  | 1h | 2022-09-12 17:00 | 2022-09-12 18:00 | 10 | 2022-09-12 17:00 | 2022-09-12 18:00 | 1h | 0d | Miguel Fernández; colores [0.05 caja] | 1h | 35.15 | 35.15 | $ 9 | € 9 |
| 12 | 1.1.2.3 | Determinar Planes Estrátegicos de la Empresa |  | 3h | 2022-09-12 18:00 | 2022-09-14 11:00 | 11 | 2022-09-12 18:00 | 2022-09-13 11:00 | 3h | 0d | Fátima Oliden | 3h | 90 | 90 | $ 24 | € 22 |
| 13 | 1.1.2.4 | Cambios en Entorno Empresarial |  | 4h | 2022-09-14 11:00 | 2022-09-14 17:00 | 12 | 2022-09-13 11:00 | 2022-09-13 17:00 | 4h | 0d | Miguel Fernández; Borrador [0.1 docena]; Correctores [0.1 docena] | 4h | 200.3 | 200.3 | $ 53 | € 50 |
| 14 | 1.1.2.5 | Fin de fase 1.1.2 | milestone | 0d | 2022-09-14 17:00 | 2022-09-14 17:00 | 13 | 2022-09-13 17:00 | 2022-09-13 17:00 | 0d | 0d |  |  |  |  | $ 0 | € 0 |
| 15 | 1.1.3 | Restricciones claves |  | 2h | 2022-09-14 17:00 | 2022-09-14 19:00 | 9 | 2022-09-13 17:00 | 2022-09-13 19:00 | 2h | 0d | Valeria Melly; Lapiz [0.05 caja] | 2h | 80.3 | 80.3 | $ 21 | € 20 |
| 16 | 1.1.4 | Requerimientos empresariales |  | 4h | 2022-09-16 09:00 | 2022-09-16 13:00 | 15 | 2022-09-14 09:00 | 2022-09-14 13:00 | 4h | 0d | Valeria Melly; Transporte [0.1%]; Mascarilla KN-95 [0.05 caja] | 4h | 161.5 | 161.5 | $ 42 | € 40 |
| 17 | 1.1.5 | Declaración de principios |  | 6h | 2022-09-16 15:00 | 2022-09-19 11:00 | 16 | 2022-09-14 15:00 | 2022-09-16 11:00 | 6h | 0d | Valeria Melly; Agua [0.2 sixpack]; Almuerzo [0.1%]; Laptop-2 | 12h | 260.2 | 260.2 | $ 68 | € 65 |
| 18 | 1.1.6 | Fin de fase 1.1 | milestone | 0d | 2022-09-19 11:00 | 2022-09-19 11:00 | 17 | 2022-09-16 11:00 | 2022-09-16 11:00 | 0d | 0d |  |  |  |  | $ 0 | € 0 |
| 19 | 1.2 | **Fase A: Arquitectura de Visión** |  | 3.06d | 2022-09-19 11:00 | 2022-09-28 11:30 | 3 | 2022-09-16 11:00 | 2022-09-23 11:30 | 3.06d | 0d |  | 47.5h | 1,120.8 | 1,120.8 | $ 295 | € 278 |
| 20 | 1.2.1 | Descripción del problema |  | 30min | 2022-09-19 11:00 | 2022-09-19 11:30 |  | 2022-09-16 11:00 | 2022-09-16 11:30 | 30min | 0d | Sebastián Pérez [1 Bultos]; Lapiceros [0.1 docena] | 0.5h | 15.4 | 15.4 | $ 4 | € 4 |
| 21 | 1.2.2 | Objetivos detallados |  | 1h | 2022-09-19 11:30 | 2022-09-19 12:30 | 20 | 2022-09-16 11:30 | 2022-09-16 12:30 | 1h | 0d | Sebastián Pérez [1 Bultos] | 1h | 30 | 30 | $ 8 | € 7 |
| 22 | 1.2.3 | Modelo de procesos actuales |  | 6h | 2022-09-19 12:30 | 2022-09-21 10:30 | 21 | 2022-09-16 12:30 | 2022-09-19 10:30 | 6h | 0d | PC [1 unid]; Licencias [1 unid]; Sebastián Pérez [1 Bultos] | 12h | 245 | 245 | $ 64 | € 61 |
| 23 | 1.2.4 | Definición de actores y sus responsabilidades |  | 30min | 2022-09-21 10:00 | 2022-09-21 10:30 | 22FF | 2022-09-19 10:00 | 2022-09-19 10:30 | 30min | 0d | Sebastián Pérez [1 Bultos]; Papel A4 [0.02 millar] | 0.5h | 15.2 | 15.2 | $ 4 | € 4 |
| 24 | 1.2.5 | Modelo de Arquitectura resultante |  | 2d | 2022-09-21 10:30 | 2022-09-28 10:30 | 23 | 2022-09-19 10:30 | 2022-09-23 10:30 | 2d | 0d | Licencias [1 unid]; Valeria Melly; Almuerzo [0.1%]; Laptop-2 | 32h | 754 | 754 | $ 198 | € 187 |
| 25 | 1.2.6 | Declaración de nueva visión |  | 0.5h | 2022-09-28 10:00 | 2022-09-28 10:30 | 24FF | 2022-09-23 10:00 | 2022-09-23 10:30 | 0.5h | 0d | Valeria Melly | 0.5h | 20 | 20 | $ 5 | € 5 |
| 26 | 1.2.7 | Plan de Comunicación |  | 1h | 2022-09-28 10:30 | 2022-09-28 11:30 | 25 | 2022-09-23 10:30 | 2022-09-23 11:30 | 1h | 0d | Valeria Melly; Plumón [1 unid]; Resaltador [0.1 docena] | 1h | 41.2 | 41.2 | $ 11 | € 10 |
| 27 | 1.2.8 | Fin de fase 1.2 | milestone | 0d | 2022-09-28 11:30 | 2022-09-28 11:30 | 26 | 2022-09-23 11:30 | 2022-09-23 11:30 | 0d | 0d |  |  |  |  | $ 0 | € 0 |

Notes:
- 5: Reunión con el stakeholder

| ID | WBS | Task | Type | Duration | Start | Finish | Predecessors | Baseline start | Baseline finish | Baseline duration | Total slack | Resources | Work | Cost | Baseline cost | Costo_Dólares | Costo_Euros |
| --- | --- | --- | --- | --- | --- | --- | --- | --- | --- | --- | --- | --- | --- | --- | --- | --- | --- |
| 28 | 1.3 | **Fase B: Arquitectura de Negocio** |  | 1d | 2022-09-28 11:30 | 2022-09-30 11:30 | 19 | 2022-09-23 11:30 | 2022-09-26 11:30 | 1d | 0d |  | 23h | 566.32 | 566.32 | $ 149 | € 141 |
| 29 | 1.3.1 | Requerimientos de arquitectura |  | 4h | 2022-09-28 11:30 | 2022-09-28 17:30 |  | 2022-09-23 11:30 | 2022-09-23 17:30 | 4h | 0d | Transporte [0.1%]; Miguel Fernández; Mascarilla KN-95 [0.02 caja] | 4h | 142.2 | 142.2 | $ 37 | € 35 |
| 30 | 1.3.2 | **Contratos de servicios** |  | 1d | 2022-09-28 11:30 | 2022-09-30 11:30 | 29SS | 2022-09-23 11:30 | 2022-09-26 11:30 | 1d | 0d |  | 19h | 424.12 | 424.12 | $ 112 | € 105 |
| 31 | 1.3.2.1 | Contrato de servicios de negocio y aplicación |  | 3h | 2022-09-28 11:30 | 2022-09-28 16:30 |  | 2022-09-23 11:30 | 2022-09-23 16:30 | 3h | 0d | PC [1 unid]; Sebastián Pérez [1 Bultos] | 6h | 97.5 | 97.5 | $ 26 | € 24 |
| 32 | 1.3.2.2 | Documentos de implementación |  | 5h | 2022-09-28 16:30 | 2022-09-30 11:30 | 31 | 2022-09-23 16:30 | 2022-09-26 11:30 | 5h | 0d | Impresora; Cartuchos [1 kit]; Folder [0.1 docena]; Sebastián Pérez [1 Bultos]; Papel A4 [0.02 millar] | 10h | 235.2 | 235.2 | $ 62 | € 58 |
| 33 | 1.3.2.3 | Análisis de brechas de la arquitectura |  | 3h | 2022-09-28 16:30 | 2022-09-30 09:30 | 32SS | 2022-09-23 16:30 | 2022-09-26 09:30 | 3h | 0.25d | Fátima Oliden; Cuaderno [0.1 docena]; Lapiz [0.02 caja]; Borrador [0.1 docena] | 3h | 91.42 | 91.42 | $ 24 | € 23 |
| 34 | 1.3.3 | Fin de fase 1.3 | milestone | 0d | 2022-09-30 11:30 | 2022-09-30 11:30 | 30 | 2022-09-26 11:30 | 2022-09-26 11:30 | 0d | 0d |  |  |  |  | $ 0 | € 0 |
| 35 | 1.4 | **Fase C: Arquitectura de Sistemas de Información** |  | 5.38d | 2022-09-30 11:30 | 2022-10-12 16:30 | 28 | 2022-09-26 11:30 | 2022-10-07 16:30 | 5.38d | 0d |  | 23h | 489.5 | 499.5 | $ 129 | € 121 |
| 36 | 1.4.1 | Propuesta de Sistemas de Información |  | 5d | 2022-09-30 11:30 | 2022-10-12 11:30 |  | 2022-09-26 11:30 | 2022-10-07 11:30 | 0.5d | 0d | Fátima Oliden; Licencias [1 unid]; Almuerzo [0.1%]; Laptop-3 | 8h | 186 | 186 | $ 49 | € 46 |
| 37 | 1.4.2 | Propuesta de Base de datos |  | 1d | 2022-10-10 11:30 | 2022-10-12 11:30 | 36FF | 2022-10-05 11:30 | 2022-10-07 11:30 | 1d | 0d | Miguel Fernández; Licencias [1 unid]; Almuerzo [0.1%]; Laptop-1 | 12h | 212 | 222 | $ 56 | € 53 |
| 38 | 1.4.3 | Análisis de brecha de la arquitectura |  | 3h | 2022-10-12 11:30 | 2022-10-12 16:30 | 37 | 2022-10-07 11:30 | 2022-10-07 16:30 | 3h | 0d | Lapiz [0.05 caja]; Cuaderno [0.1 docena]; Sebastián Pérez [1 Bultos] | 3h | 91.5 | 91.5 | $ 24 | € 23 |
| 39 | 1.4.4 | Fin de fase 1.4 | milestone | 0d | 2022-10-12 16:30 | 2022-10-12 16:30 | 38 | 2022-10-07 16:30 | 2022-10-07 16:30 | 0d | 0d |  |  |  |  | $ 0 | € 0 |
| 40 | 1.5 | **Fase D: Arquitectura de Tecnología** |  | 2d | 2022-10-12 16:30 | 2022-10-17 16:30 | 35 | 2022-10-07 16:30 | 2022-10-10 18:30 | 1.25d | 0d |  | 45h | 1,042.82 | 798.32 | $ 274 | € 259 |
| 41 | 1.5.1 | Propuesta de servidores |  | 3h | 2022-10-12 16:30 | 2022-10-14 09:30 |  | 2022-10-07 16:30 | 2022-10-10 09:30 | 3h | 0d | PC [1 unid]; Licencias [1 unid]; Miguel Fernández; Laptop-1 | 9h | 167 | 167 | $ 44 | € 41 |
| 42 | 1.5.2 | Propuesta de conectividad interna |  | 6h | 2022-10-12 16:30 | 2022-10-14 12:30 | 41SS | 2022-10-07 16:30 | 2022-10-10 09:30 | 3h | 0d | Licencias [1 unid]; Valeria Melly; Laptop-2 | 12h | 299 | 167 | $ 79 | € 74 |
| 43 | 1.5.3 | Propuesta de conectividad externa |  | 11h | 2022-10-12 16:30 | 2022-10-17 09:30 | 42SS | 2022-10-07 16:30 | 2022-10-10 11:30 | 5h | 0d | Licencias [1 unid]; Laptop-1; Fátima Oliden | 15h | 357.5 | 245 | $ 94 | € 89 |
| 44 | 1.5.4 | Propuesta de servicios a contratar |  | 2h | 2022-10-17 09:30 | 2022-10-17 11:30 | 43 | 2022-10-10 11:30 | 2022-10-10 15:30 | 2h | 0d | PC [1 unid]; Licencias [1 unid]; Miguel Fernández; Laptop-1 | 6h | 128 | 128 | $ 34 | € 32 |
| 45 | 1.5.5 | Análisis de brecha de la arquitectura |  | 3h | 2022-10-17 11:30 | 2022-10-17 16:30 | 44 | 2022-10-10 15:30 | 2022-10-10 18:30 | 3h | 0d | Fátima Oliden; Cuaderno [0.1 docena]; Lapiz [0.02 caja] | 3h | 91.32 | 91.32 | $ 24 | € 23 |
| 46 | 1.5.6 | Fin de fase 1.5 | milestone | 0d | 2022-10-17 16:30 | 2022-10-17 16:30 | 45 | 2022-10-10 18:30 | 2022-10-10 18:30 | 0d | 0d |  |  |  |  | $ 0 | € 0 |
| 47 | 1.6 | **Fase de Presentación** |  | 0.62d | 2022-10-17 16:30 | 2022-10-19 11:30 | 40 | 2022-10-10 18:30 | 2022-10-12 11:00 | 0.31d | 0d |  | 25h | 777.08 | 777.08 | $ 204 | € 193 |
| 48 | 1.6.1 | Integración de Proyectos de Implementación |  | 2h | 2022-10-17 16:30 | 2022-10-17 18:30 |  | 2022-10-10 18:30 | 2022-10-11 10:30 | 2h | 0d | Grapas [0.02 caja]; Engrapador [1 unid]; Fátima Oliden; Miguel Fernández; Sebastián Pérez [1 Bultos]; Valeria Melly; PC [1 unid] | 10h | 278.08 | 278.08 | $ 73 | € 69 |
| 49 | 1.6.2 | Presentación de Plan de Migración |  | 3h | 2022-10-17 18:30 | 2022-10-19 11:30 | 48 | 2022-10-11 10:30 | 2022-10-12 11:00 | 3h | 0d | Transporte [0.1%]; Mascarilla KN-95 [0.1 caja]; Folder [0.1 docena]; Impresora; Perforador [1 unid]; Fátima Oliden; Miguel Fernández; Sebastián Pérez [1 Bultos]; Valeria Melly; Cartuchos [1 kit]; Papel A4 [0.3 millar] | 15h | 499 | 499 | $ 131 | € 124 |
| 50 | 1.6.3 | Fin de fase 1.6 | milestone | 0d | 2022-10-19 11:30 | 2022-10-19 11:30 | 49 | 2022-10-12 11:00 | 2022-10-12 11:00 | 0d | 0d |  |  |  |  | $ 0 | € 0 |
